# PR1-MGPI

Schedule from MS Project, 2009-11-06 to 2010-11-24.
Grupo Gas Natural

## Calendars

- Estándar: Mon-Fri 09:00-13:00, 15:00-19:00; Sat-Sun off. Exceptions (off unless hours are given): 2010-04-02, 2010-04-05, 2010-05-24, 2010-06-24 to 2010-06-25, 2010-09-24, 2010-10-12.

## Schedule

| ID | WBS | Task | Type | Duration | Start | Finish | Predecessors | Total slack | Free slack | Constraint |
| --- | --- | --- | --- | --- | --- | --- | --- | --- | --- | --- |
| 2 | 1 | **Preparació Projecte** |  | 31d | 2009-11-06 | 2009-12-18 |  | 10d |  |  |
| 3 | 1.1 | Reunió equip Govern FEIGAE |  | 1d | 2009-11-06 | 2009-11-06 |  | 10d | 0d | start no earlier than 2009-11-06 |
| 4 | 1.2 | Definició Solució i Cerca de Partners |  | 25d | 2009-11-09 | 2009-12-11 | 3 | 10d | 0d |  |
| 5 | 1.3 | Reunió Viabilitat Projecte |  | 1d | 2009-12-14 | 2009-12-14 | 4 | 10d | 0d | start no earlier than 2007-12-18 |
| 6 | 1.4 | Projecte Decidit | milestone | 0d | 2009-12-14 | 2009-12-14 | 5 | 10d | 0d |  |
| 7 | 1.5 | Preparació acords |  | 3d | 2009-12-15 | 2009-12-17 | 6 | 10d | 0d |  |
| 8 | 1.6 | Signatura Acords |  | 1d | 2009-12-18 | 2009-12-18 | 7 | 10d |  | start no earlier than 2007-12-24 |
| 9 | 2 | **Definició Pla de Projecte** |  | 10.5d | 2010-01-04 | 2010-01-18 |  | 0d |  |  |
| 10 | 2.1 | **Reunions Implicats** |  | 7.5d | 2010-01-04 | 2010-01-13 |  | 0d |  |  |
| 11 | 2.1.1 | Reunió Inici Projecte |  | 0.5d | 2010-01-04 | 2010-01-04 | 8 | 0d |  | start no earlier than 2010-01-04 |
| 12 | 2.1.2 | Reunió amb Administració |  | 0.5d | 2010-01-07 | 2010-01-07 | 11 | 95d | 0.5d | start no earlier than 2010-01-07 |
| 13 | 2.1.3 | Reunió amb Marketing |  | 0.5d | 2010-01-08 | 2010-01-08 | 12 | 94.5d | 0.5d | start no earlier than 2010-01-08 |
| 14 | 2.1.4 | Reunió amb Legal |  | 0.5d | 2010-01-11 | 2010-01-11 | 13 | 94d | 0.5d | start no earlier than 2010-01-11 |
| 15 | 2.1.5 | Reunió amb TIC |  | 0.5d | 2010-01-12 | 2010-01-12 | 14 | 93.5d | 0d | start no earlier than 2010-01-12 |
| 16 | 2.1.6 | Reunió amb NOTA |  | 0.5d | 2010-01-12 | 2010-01-12 | 15 | 93.5d | 0d |  |
| 17 | 2.1.7 | Reunió Comité Executiu Projecte |  | 0.5d | 2010-01-13 | 2010-01-13 | 16 | 218d |  |  |
| 18 | 2.2 | Elaboració Pla |  | 9d | 2010-01-04 | 2010-01-15 | 11 | 0d |  |  |
| 19 | 2.3 | Presentació Pla de Projecte |  | 1d | 2010-01-15 | 2010-01-18 | 18 | 0d |  | start no earlier than 2008-01-18 |
| 20 | 2.4 | Pla de Projecte Acceptat | milestone | 0d | 2010-01-18 | 2010-01-18 | 19 | 0d |  |  |
| 21 | 3 | **Gestió del Projecte** |  | 215d | 2010-01-18 | 2010-11-24 |  | 0d |  |  |
| 22 | 3.1 | **Reunió Comitè Direcció** |  | 189d | 2010-02-09 | 2010-11-09 |  | 10.5d |  |  |
| 23 | 3.1.1 | Reunió Comitè Direcció 1 |  | 1d | 2010-02-09 | 2010-02-09 |  | 198.5d |  | start no earlier than 2010-02-09 |
| 24 | 3.1.2 | Reunió Comitè Direcció 2 |  | 1d | 2010-03-09 | 2010-03-09 |  | 178.5d |  | start no earlier than 2010-03-09 |
| 25 | 3.1.3 | Reunió Comitè Direcció 3 |  | 1d | 2010-04-13 | 2010-04-13 |  | 155.5d |  | start no earlier than 2010-04-13 |
| 26 | 3.1.4 | Reunió Comitè Direcció 4 |  | 1d | 2010-05-11 | 2010-05-11 |  | 135.5d |  | start no earlier than 2010-05-11 |
| 27 | 3.1.5 | Reunió Comitè Direcció 5 |  | 1d | 2010-06-08 | 2010-06-08 |  | 116.5d |  | start no earlier than 2010-06-08 |
| 28 | 3.1.6 | Reunió Comitè Direcció 6 |  | 1d | 2010-07-13 | 2010-07-13 |  | 93.5d |  | start no earlier than 2010-07-13 |
| 29 | 3.1.7 | Reunió Comitè Direcció 7 |  | 1d | 2010-08-10 | 2010-08-10 |  | 73.5d |  | start no earlier than 2010-08-10 |
| 30 | 3.1.8 | Reunió Comitè Direcció 8 |  | 1d | 2010-09-14 | 2010-09-14 |  | 48.5d |  | start no earlier than 2010-09-14 |
| 31 | 3.1.9 | Reunió Comitè Direcció 9 |  | 1d | 2010-10-13 | 2010-10-13 |  | 29.5d |  | start no earlier than 2010-10-12 |
| 32 | 3.1.10 | Reunió Comitè Direcció 10 |  | 1d | 2010-11-09 | 2010-11-09 |  | 8.5d |  | start no earlier than 2010-11-09 |

| ID | WBS | Task | Duration | Start | Finish | Predecessors | Total slack | Free slack | Constraint |
| --- | --- | --- | --- | --- | --- | --- | --- | --- | --- |
| 33 | 3.2 | **Reunió Comitè Executiu** | 194d | 2010-01-25 | 2010-11-01 |  | 16.5d |  |  |
| 34 | 3.2.1 | Reunió Comitè Executiu 1 | 1d | 2010-01-25 | 2010-01-25 |  | 209.5d |  | start no earlier than 2010-01-25 |
| 35 | 3.2.2 | Reunió Comitè Executiu 2 | 1d | 2010-02-08 | 2010-02-08 |  | 199.5d |  | start no earlier than 2010-02-08 |
| 36 | 3.2.3 | Reunió Comitè Executiu 3 | 1d | 2010-02-22 | 2010-02-22 |  | 189.5d |  | start no earlier than 2010-02-22 |
| 37 | 3.2.4 | Reunió Comitè Executiu 4 | 1d | 2010-03-08 | 2010-03-08 |  | 179.5d |  | start no earlier than 2010-03-08 |
| 38 | 3.2.5 | Reunió Comitè Executiu 5 | 1d | 2010-03-22 | 2010-03-22 |  | 169.5d |  | start no earlier than 2010-03-22 |
| 39 | 3.2.6 | Reunió Comitè Executiu 6 | 1d | 2010-04-06 | 2010-04-06 |  | 160.5d |  | start no earlier than 2010-04-05 |
| 40 | 3.2.7 | Reunió Comitè Executiu 7 | 1d | 2010-04-19 | 2010-04-19 |  | 151.5d |  | start no earlier than 2010-04-19 |
| 41 | 3.2.8 | Reunió Comitè Executiu 8 | 1d | 2010-05-03 | 2010-05-03 |  | 141.5d |  | start no earlier than 2010-05-03 |
| 42 | 3.2.9 | Reunió Comitè Executiu 9 | 1d | 2010-05-17 | 2010-05-17 |  | 131.5d |  | start no earlier than 2010-05-17 |
| 43 | 3.2.10 | Reunió Comitè Executiu 10 | 1d | 2010-05-31 | 2010-05-31 |  | 122.5d |  | start no earlier than 2010-05-31 |
| 44 | 3.2.11 | Reunió Comitè Executiu 11 | 1d | 2010-06-14 | 2010-06-14 |  | 112.5d |  | start no earlier than 2010-06-14 |
| 45 | 3.2.12 | Reunió Comitè Executiu 12 | 1d | 2010-06-28 | 2010-06-28 |  | 104.5d |  | start no earlier than 2010-06-28 |
| 46 | 3.2.13 | Reunió Comitè Executiu 13 | 1d | 2010-07-12 | 2010-07-12 |  | 94.5d |  | start no earlier than 2010-07-12 |
| 47 | 3.2.14 | Reunió Comitè Executiu 14 | 1d | 2010-07-26 | 2010-07-26 |  | 84.5d |  | start no earlier than 2010-07-26 |
| 48 | 3.2.15 | Reunió Comitè Executiu 15 | 1d | 2010-08-09 | 2010-08-09 |  | 74.5d |  | start no earlier than 2010-08-09 |
| 49 | 3.2.16 | Reunió Comitè Executiu 16 | 1d | 2010-08-23 | 2010-08-23 |  | 64.5d |  | start no earlier than 2010-08-23 |
| 50 | 3.2.17 | Reunió Comitè Executiu 17 | 1d | 2010-09-06 | 2010-09-06 |  | 54.5d |  | start no earlier than 2010-09-06 |
| 51 | 3.2.18 | Reunió Comitè Executiu 18 | 1d | 2010-09-20 | 2010-09-20 |  | 44.5d |  | start no earlier than 2010-09-20 |
| 52 | 3.2.19 | Reunió Comitè Executiu 19 | 1d | 2010-10-04 | 2010-10-04 |  | 34.5d |  | start no earlier than 2010-10-04 |
| 53 | 3.2.20 | Reunió Comitè Executiu 20 | 1d | 2010-10-18 | 2010-10-18 |  | 24.5d |  | start no earlier than 2010-10-18 |
| 54 | 3.2.21 | Reunió Comitè Executiu 21 | 1d | 2010-11-01 | 2010-11-01 |  | 14.5d |  | start no earlier than 2010-11-01 |
| 55 | 3.3 | Seguiment i Control | 215d | 2010-01-18 | 2010-11-24 | 20 | 0d |  |  |
| 56 | 4 | Definició detallada de l'Acord | 20d | 2010-01-18 | 2010-02-15 | 20 | 10d | 0d |  |
| 57 | 5 | Definicions Legals | 20d | 2010-01-25 | 2010-02-22 | 56FF+5d | 10d | 0d |  |

| ID | WBS | Task | Type | Duration | Start | Finish | Predecessors | Total slack | Free slack |
| --- | --- | --- | --- | --- | --- | --- | --- | --- | --- |
| 58 | 6 | **Anàlisi d'Impacte TIC i Administratiu** |  | 20d | 2010-02-22 | 2010-03-22 |  | 10d |  |
| 59 | 6.1 | Anàlisi d'Impacte BCP |  | 2d | 2010-02-22 | 2010-02-24 | 57 | 23d | 13d |
| 60 | 6.2 | Anàlisi impacte LSP |  | 15d | 2010-02-22 | 2010-03-15 | 57 | 10d | 0d |
| 61 | 6.3 | Anàlisi Impacte TIC FEIGAE |  | 15d | 2010-02-22 | 2010-03-15 | 57 | 10d | 0d |
| 62 | 6.4 | Anàlisi Impacte NOTA |  | 3d | 2010-02-22 | 2010-02-25 | 57 | 22d | 12d |
| 63 | 6.5 | Consolidació Anàlisis d'Impacte |  | 5d | 2010-03-15 | 2010-03-22 | 59, 60, 61, 62 | 10d | 0d |
| 64 | 6.6 | Anàlisis d'Impacte Consolidats | milestone | 0d | 2010-03-22 | 2010-03-22 | 63 | 170d |  |
| 65 | 7 | **Implantació a Assegurances LSP** |  | 100d | 2010-03-22 | 2010-08-16 |  | 70d |  |
| 66 | 7.1 | **Adequacions TIC** |  | 60d | 2010-03-22 | 2010-06-17 |  | 100d |  |
| 67 | 7.1.1 | Análisi i Prototip |  | 13d | 2010-03-22 | 2010-04-12 | 63 | 100d | 0d |
| 68 | 7.1.2 | Validació Prototip |  | 2d | 2010-04-12 | 2010-04-14 | 67 | 100d | 0d |
| 69 | 7.1.3 | Adequació Web |  | 30d | 2010-04-14 | 2010-05-27 | 68 | 100d | 0d |
| 70 | 7.1.4 | Adequació Sistema de gestió |  | 35d | 2010-04-14 | 2010-06-03 | 68 | 120d |  |
| 71 | 7.1.5 | Proves funcionals |  | 15d | 2010-05-27 | 2010-06-17 | 69 | 100d | 30d |
| 72 | 7.2 | Proves d'integració |  | 10d | 2010-08-02 | 2010-08-16 | 71, 88SS | 70d |  |
| 73 | 8 | **Implantació a Banc BCP** |  | 90d | 2010-03-22 | 2010-08-02 |  | 80d |  |
| 74 | 8.1 | Parametrització PPE |  | 10d | 2010-03-22 | 2010-04-07 | 63 | 155d | 75d |
| 75 | 8.2 | Proves d'Integració |  | 5d | 2010-07-26 | 2010-08-02 | 74, 87SS | 80d |  |
| 76 | 9 | **Implantació a FEIGAE** |  | 110d | 2010-03-22 | 2010-08-30 |  | 10d |  |
| 77 | 9.1 | **Adequaciosn TIC** |  | 85d | 2010-03-22 | 2010-07-26 |  | 10d |  |
| 78 | 9.1.1 | Anàlisi i Prototip |  | 15d | 2010-03-22 | 2010-04-14 | 63 | 10d | 0d |
| 79 | 9.1.2 | Validació Prototip |  | 5d | 2010-04-14 | 2010-04-21 | 78 | 10d | 0d |
| 80 | 9.1.3 | Desenvolupament Web |  | 35d | 2010-04-21 | 2010-06-10 | 79 | 25d | 0d |
| 81 | 9.1.4 | Proves solució Web |  | 10d | 2010-06-10 | 2010-06-28 | 80 | 25d | 10d |
| 82 | 9.1.5 | Desenvolupament Aplicació Gestió del Servei |  | 40d | 2010-04-21 | 2010-06-17 | 79 | 15d | 0d |
| 83 | 9.1.6 | Proves Aplicació GS |  | 15d | 2010-06-17 | 2010-07-12 | 82 | 15d | 0d |
| 84 | 9.1.7 | Integració Interna |  | 10d | 2010-07-12 | 2010-07-26 | 81, 83 | 15d | 0d |

| ID | WBS | Task | Type | Duration | Start | Finish | Predecessors | Total slack | Free slack |
| --- | --- | --- | --- | --- | --- | --- | --- | --- | --- |
| 85 | 9.2 | **Proves d'Integració** |  | 25d | 2010-07-26 | 2010-08-30 |  | 15d |  |
| 86 | 9.2.1 | Inici Proves d'Integració | milestone | 0d | 2010-07-26 | 2010-07-26 | 84 | 15d | 0d |
| 87 | 9.2.2 | Integració amb BCP |  | 5d | 2010-07-26 | 2010-08-02 | 86 | 15d | 0d |
| 88 | 9.2.3 | Integració amb LSP |  | 10d | 2010-08-02 | 2010-08-16 | 87 | 15d | 0d |
| 89 | 9.2.4 | Integració amb Proveidor solució Mobilitat |  | 10d | 2010-08-16 | 2010-08-30 | 88 | 15d | 0d |
| 90 | 9.2.5 | Sistemes Disponibles i Integrats | milestone | 0d | 2010-08-30 | 2010-08-30 | 89 | 15d | 0d |
| 91 | 10 | **Implantació a NOTA** |  | 110d | 2010-03-22 | 2010-08-30 |  | 60d |  |
| 92 | 10.1 | Definició Requeriments dels serveis |  | 10d | 2010-03-22 | 2010-04-07 | 63 | 110d | 0d |
| 93 | 10.2 | Configuració del Servei segons requeriments |  | 10d | 2010-04-07 | 2010-04-21 | 92, 102 | 110d | 0d |
| 94 | 10.3 | Parametrització dels Serveis |  | 15d | 2010-04-21 | 2010-05-12 | 93 | 110d | 16.5d |
| 95 | 10.4 | Implantanció solució Mobilitat |  | 15d | 2010-06-07 | 2010-06-29 | 94, 105SS | 93.5d | 33.5d |
| 96 | 10.5 | Participació a la Integració FEIGAE/Moilitat |  | 10d | 2010-08-16 | 2010-08-30 | 95, 89SS | 60d |  |
| 97 | 11 | **Proveïment Producte** |  | 158.5d | 2010-01-13 | 2010-08-30 |  | 60d |  |
| 98 | 11.1 | Definició requeriments solució mobilitat |  | 10d | 2010-01-18 | 2010-02-01 | 20 | 105d | 11.5d |
| 99 | 11.2 | Anàlisi Mercat i Avaluació proveïdors |  | 30d | 2010-01-13 | 2010-02-23 | 16, 98FF+5d | 93.5d | 0d |
| 100 | 11.3 | Proveïdor Seleccionat | milestone | 0d | 2010-03-02 | 2010-03-02 | 99FS+5d | 93.5d | 0d |
| 101 | 11.4 | Contractació Proveïdor |  | 5d | 2010-03-03 | 2010-03-09 | 100 | 93.5d | 0d |
| 102 | 11.5 | Anàlisi Requeriments demanats |  | 10d | 2010-03-10 | 2010-03-23 | 101 | 93.5d | 0d |
| 103 | 11.6 | Parametrització solució |  | 20d | 2010-03-24 | 2010-04-22 | 102 | 93.5d | 0d |
| 104 | 11.7 | Desenvolupament Adaptacions particulars |  | 30d | 2010-04-23 | 2010-06-04 | 103 | 93.5d | 0d |
| 105 | 11.8 | Implantanció a l'entorn FEIGAE/NOTA |  | 15d | 2010-06-07 | 2010-06-29 | 104 | 93.5d | 0d |
| 106 | 11.9 | Proves Integració amb solució FEIGAE |  | 10d | 2010-08-16 | 2010-08-30 | 105, 89SS | 60d |  |
| 107 | 12 | **Prova Pilot** |  | 15d | 2010-09-06 | 2010-09-28 |  | 15d |  |
| 108 | 12.1 | Inici Prova Pilot | milestone | 0d | 2010-09-06 | 2010-09-06 | 90, 117 | 15d | 0d |
| 109 | 12.2 | Proves extrem-extrem |  | 10d | 2010-09-06 | 2010-09-20 | 108 | 15d | 0d |
| 110 | 12.3 | Ajustaments Finals |  | 5d | 2010-09-20 | 2010-09-28 | 109 | 15d | 0d |

| ID | WBS | Task | Type | Duration | Start | Finish | Predecessors | Total slack | Free slack |
| --- | --- | --- | --- | --- | --- | --- | --- | --- | --- |
| 111 | 13 | **Adaptacions Administratives** |  | 125d | 2010-02-22 | 2010-08-23 | 57 | 65d |  |
| 112 | 13.1 | Adequacions Administratives LSP |  | 30d | 2010-02-22 | 2010-04-07 |  | 160d |  |
| 113 | 13.2 | Definició Processos Administratius FEIGAE |  | 10d | 2010-02-22 | 2010-03-08 |  | 135d | 95d |
| 114 | 13.3 | Implantanció Processos Admin. FEIGAE |  | 20d | 2010-07-26 | 2010-08-23 | 113, 84 | 40d | 25d |
| 115 | 14 | **Formació** |  | 120d | 2010-04-21 | 2010-10-13 |  | 15d |  |
| 116 | 14.1 | Pla de Formació |  | 10d | 2010-04-21 | 2010-05-05 | 79 | 95d | 80d |
| 117 | 14.2 | Formació Gestors del SAU |  | 5d | 2010-08-30 | 2010-09-06 | 116, 90 | 15d | 0d |
| 118 | 14.3 | Formació usuaris Mobilitat |  | 15d | 2010-09-20 | 2010-10-13 | 117, 109 | 15d | 0d |
| 119 | 15 | **Acció Comercial** |  | 140d | 2010-04-21 | 2010-11-10 |  | 10d |  |
| 120 | 15.1 | Definició Campanyes |  | 15d | 2010-04-21 | 2010-05-12 | 79 | 10d | 0d |
| 121 | 15.2 | Preparació i Seguiment Campanyes |  | 125d | 2010-05-12 | 2010-11-10 | 120 | 10d |  |
| 122 | 15.3 | Decisió sobre campanyes | milestone | 0d | 2010-06-28 | 2010-06-28 | 123SF-25d | 105d |  |
| 123 | 15.4 | Campanya Promocional |  | 20d | 2010-08-02 | 2010-08-30 | 127SF-20d, 120 | 40d | 0d |
| 124 | 15.5 | Campanya Consolidació |  | 20d | 2010-09-28 | 2010-10-27 | 123, 127 | 20d |  |
| 125 | 16 | **Posada en Operació** |  | 30d | 2010-09-20 | 2010-11-03 |  | 15d |  |
| 126 | 16.1 | Distribució PDAs |  | 20d | 2010-09-20 | 2010-10-20 | 118SS | 25d |  |
| 127 | 16.2 | Inici Operació | milestone | 0d | 2010-09-28 | 2010-09-28 | 110, 114, 118SS+5d | 15d | 0d |
| 128 | 16.3 | Suport a la posada en marxa |  | 10d | 2010-09-28 | 2010-10-13 | 127 | 15d | 0d |
| 129 | 16.4 | Tancament Projecte Tècnic |  | 10d | 2010-10-13 | 2010-10-27 | 128 | 15d | 0d |
| 130 | 16.5 | Traspàs a Manteniment |  | 5d | 2010-10-27 | 2010-11-03 | 129 | 15d | 0d |
| 131 | 16.6 | Projecte Tancat | milestone | 0d | 2010-11-03 | 2010-11-03 | 130 | 15d |  |
