# PR1-MGPI

Schedule from MS Project, 2009-11-06 to 2011-10-31.
Grupo Gas Natural

## Calendars

- Estándar: Mon-Fri 09:00-13:00, 15:00-19:00; Sat-Sun off. Exceptions (off unless hours are given): 2010-04-02, 2010-04-05, 2010-05-24, 2010-06-24 to 2010-06-25, 2010-09-24, 2010-10-12.

## Schedule

| ID | WBS | Task | Type | Duration | Start | Finish | Predecessors | Total slack | Free slack | Constraint |
| --- | --- | --- | --- | --- | --- | --- | --- | --- | --- | --- |
| 2 | 1 | **Preparació Projecte** |  | 31d | 2009-11-06 | 2009-12-18 |  | 238.5d |  |  |
| 3 | 1.1 | Reunió equip Govern FEIGAE |  | 1d | 2009-11-06 | 2009-11-06 |  | 238.5d | 0d | start no earlier than 2009-11-06 |
| 4 | 1.2 | Definició Solució i Cerca de Partners |  | 25d | 2009-11-09 | 2009-12-11 | 3 | 238.5d | 0d |  |
| 5 | 1.3 | Reunió Viabilitat Projecte |  | 1d | 2009-12-14 | 2009-12-14 | 4 | 238.5d | 0d | start no earlier than 2007-12-18 |
| 6 | 1.4 | Projecte Decidit | milestone | 0d | 2009-12-14 | 2009-12-14 | 5 | 238.5d | 0d |  |
| 7 | 1.5 | Preparació acords |  | 3d | 2009-12-15 | 2009-12-17 | 6 | 238.5d | 0d |  |
| 8 | 1.6 | Signatura Acords |  | 1d | 2009-12-18 | 2009-12-18 | 7 | 238.5d | 10d | start no earlier than 2007-12-24 |
| 9 | 2 | **Definició Pla de Projecte** |  | 10.5d | 2010-01-04 | 2010-01-18 |  | 228.5d |  |  |
| 10 | 2.1 | **Reunions Implicats** |  | 7.5d | 2010-01-04 | 2010-01-13 |  | 228.5d |  |  |
| 11 | 2.1.1 | Reunió Inici Projecte |  | 0.5d | 2010-01-04 | 2010-01-04 | 8 | 228.5d | 0d | start no earlier than 2010-01-04 |
| 12 | 2.1.2 | Reunió amb Administració |  | 0.5d | 2010-01-07 | 2010-01-07 | 11 | 358.5d | 0.5d | start no earlier than 2010-01-07 |
| 13 | 2.1.3 | Reunió amb Marketing |  | 0.5d | 2010-01-08 | 2010-01-08 | 12 | 358d | 0.5d | start no earlier than 2010-01-08 |
| 14 | 2.1.4 | Reunió amb Legal |  | 0.5d | 2010-01-11 | 2010-01-11 | 13 | 357.5d | 0.5d | start no earlier than 2010-01-11 |
| 15 | 2.1.5 | Reunió amb TIC |  | 0.5d | 2010-01-12 | 2010-01-12 | 14 | 357d | 0d | start no earlier than 2010-01-12 |
| 16 | 2.1.6 | Reunió amb NOTA |  | 0.5d | 2010-01-12 | 2010-01-12 | 15 | 357d | 0d |  |
| 17 | 2.1.7 | Reunió Comité Executiu Projecte |  | 0.5d | 2010-01-13 | 2010-01-13 | 16 | 461.5d |  |  |
| 18 | 2.2 | Elaboració Pla |  | 9d | 2010-01-04 | 2010-01-15 | 11 | 228.5d | 0d |  |
| 19 | 2.3 | Presentació Pla de Projecte |  | 1d | 2010-01-15 | 2010-01-18 | 18 | 228.5d | 0d | start no earlier than 2008-01-18 |
| 20 | 2.4 | Pla de Projecte Acceptat | milestone | 0d | 2010-01-18 | 2010-01-18 | 19 | 228.5d | 0d |  |
| 21 | 3 | **Gestió del Projecte** |  | 459d | 2010-01-18 | 2011-10-31 |  | 0d |  |  |
| 22 | 3.1 | **Reunió Comitè Direcció** |  | 415d | 2010-02-09 | 2011-09-21 |  | 28d |  |  |
| 23 | 3.1.1 | Reunió Comitè Direcció 1 |  | 1d | 2010-02-09 | 2010-02-09 |  | 442d |  | start no earlier than 2010-02-09 |
| 24 | 3.1.2 | Reunió Comitè Direcció 2 |  | 1d | 2010-03-09 | 2010-03-09 |  | 422d |  | start no earlier than 2010-03-09 |
| 25 | 3.1.3 | Reunió Comitè Direcció 3 |  | 1d | 2010-04-13 | 2010-04-13 |  | 399d |  | start no earlier than 2010-04-13 |
| 26 | 3.1.4 | Reunió Comitè Direcció 4 |  | 1d | 2010-05-11 | 2010-05-11 |  | 379d |  | start no earlier than 2010-05-11 |
| 27 | 3.1.5 | Reunió Comitè Direcció 5 |  | 1d | 2010-06-08 | 2010-06-08 |  | 360d |  | start no earlier than 2010-06-08 |
| 28 | 3.1.6 | Reunió Comitè Direcció 6 |  | 1d | 2010-07-13 | 2010-07-13 |  | 337d |  | start no earlier than 2010-07-13 |
| 29 | 3.1.7 | Reunió Comitè Direcció 7 |  | 1d | 2010-08-10 | 2010-08-10 |  | 317d |  | start no earlier than 2010-08-10 |
| 30 | 3.1.8 | Reunió Comitè Direcció 8 |  | 1d | 2010-09-14 | 2010-09-14 |  | 292d |  | start no earlier than 2010-09-14 |
| 31 | 3.1.9 | Reunió Comitè Direcció 9 |  | 1d | 2010-10-13 | 2010-10-13 |  | 273d |  | start no earlier than 2010-10-12 |
| 32 | 3.1.10 | Reunió Comitè Direcció 10 |  | 1d | 2010-11-09 | 2010-11-09 |  | 254d |  | start no earlier than 2010-11-09 |
| 33 | 3.1.11 | Reunió Comitè Direcció 11 |  | 1d | 2011-09-21 | 2011-09-21 |  | 28d |  | start no earlier than 2011-09-21 |

| ID | WBS | Task | Duration | Start | Finish | Predecessors | Total slack | Free slack | Constraint |
| --- | --- | --- | --- | --- | --- | --- | --- | --- | --- |
| 34 | 3.2 | **Reunió Comitè Executiu** | 425d | 2010-01-25 | 2011-09-20 |  | 29d |  |  |
| 35 | 3.2.1 | Reunió Comitè Executiu 1 | 1d | 2010-01-25 | 2010-01-25 |  | 453d |  | start no earlier than 2010-01-25 |
| 36 | 3.2.2 | Reunió Comitè Executiu 2 | 1d | 2010-02-08 | 2010-02-08 |  | 443d |  | start no earlier than 2010-02-08 |
| 37 | 3.2.3 | Reunió Comitè Executiu 3 | 1d | 2010-02-22 | 2010-02-22 |  | 433d |  | start no earlier than 2010-02-22 |
| 38 | 3.2.4 | Reunió Comitè Executiu 4 | 1d | 2010-03-08 | 2010-03-08 |  | 423d |  | start no earlier than 2010-03-08 |
| 39 | 3.2.5 | Reunió Comitè Executiu 5 | 1d | 2010-03-22 | 2010-03-22 |  | 413d |  | start no earlier than 2010-03-22 |
| 40 | 3.2.6 | Reunió Comitè Executiu 6 | 1d | 2010-04-06 | 2010-04-06 |  | 404d |  | start no earlier than 2010-04-05 |
| 41 | 3.2.7 | Reunió Comitè Executiu 7 | 1d | 2010-04-19 | 2010-04-19 |  | 395d |  | start no earlier than 2010-04-19 |
| 42 | 3.2.8 | Reunió Comitè Executiu 8 | 1d | 2010-05-03 | 2010-05-03 |  | 385d |  | start no earlier than 2010-05-03 |
| 43 | 3.2.9 | Reunió Comitè Executiu 9 | 1d | 2010-05-17 | 2010-05-17 |  | 375d |  | start no earlier than 2010-05-17 |
| 44 | 3.2.10 | Reunió Comitè Executiu 10 | 1d | 2010-05-31 | 2010-05-31 |  | 366d |  | start no earlier than 2010-05-31 |
| 45 | 3.2.11 | Reunió Comitè Executiu 11 | 1d | 2010-06-14 | 2010-06-14 |  | 356d |  | start no earlier than 2010-06-14 |
| 46 | 3.2.12 | Reunió Comitè Executiu 12 | 1d | 2010-06-28 | 2010-06-28 |  | 348d |  | start no earlier than 2010-06-28 |
| 47 | 3.2.13 | Reunió Comitè Executiu 13 | 1d | 2010-07-12 | 2010-07-12 |  | 338d |  | start no earlier than 2010-07-12 |
| 48 | 3.2.14 | Reunió Comitè Executiu 14 | 1d | 2010-07-26 | 2010-07-26 |  | 328d |  | start no earlier than 2010-07-26 |
| 49 | 3.2.15 | Reunió Comitè Executiu 15 | 1d | 2010-08-09 | 2010-08-09 |  | 318d |  | start no earlier than 2010-08-09 |
| 50 | 3.2.16 | Reunió Comitè Executiu 16 | 1d | 2010-08-23 | 2010-08-23 |  | 308d |  | start no earlier than 2010-08-23 |
| 51 | 3.2.17 | Reunió Comitè Executiu 17 | 1d | 2010-09-06 | 2010-09-06 |  | 298d |  | start no earlier than 2010-09-06 |
| 52 | 3.2.18 | Reunió Comitè Executiu 18 | 1d | 2010-09-20 | 2010-09-20 |  | 288d |  | start no earlier than 2010-09-20 |
| 53 | 3.2.19 | Reunió Comitè Executiu 19 | 1d | 2010-10-04 | 2010-10-04 |  | 279d |  | start no earlier than 2010-10-04 |
| 54 | 3.2.20 | Reunió Comitè Executiu 20 | 1d | 2010-10-18 | 2010-10-18 |  | 270d |  | start no earlier than 2010-10-18 |
| 55 | 3.2.21 | Reunió Comitè Executiu 21 | 1d | 2010-11-01 | 2010-11-01 |  | 260d |  | start no earlier than 2010-11-01 |
| 56 | 3.2.22 | Reunió Comitè Executiu 22 | 1d | 2011-09-20 | 2011-09-20 |  | 29d |  | start no earlier than 2011-09-20 |
| 57 | 3.3 | Seguiment i Control | 459d | 2010-01-18 | 2011-10-31 |  | 0d |  | start no earlier than 2010-01-18 |
| 58 | 4 | Definició detallada de l'Acord | 20d | 2010-01-18 | 2010-02-15 | 20 | 228.5d | 3.5d |  |
| 59 | 5 | Definicions Legals | 24d | 2010-01-25 | 2010-02-25 | 58FF+5d | 225d | 0d | start no earlier than 2010-01-25 |

| ID | WBS | Task | Type | Duration | Start | Finish | Predecessors | Total slack | Free slack | Constraint |
| --- | --- | --- | --- | --- | --- | --- | --- | --- | --- | --- |
| 60 | 6 | **Anàlisi d'Impacte TIC i Administratiu** |  | 20d | 2010-02-26 | 2010-03-25 |  | 225d |  |  |
| 61 | 6.1 | Anàlisi d'Impacte BCP |  | 2d | 2010-02-26 | 2010-03-01 | 59 | 238d | 13d |  |
| 62 | 6.2 | Anàlisi impacte LSP |  | 15d | 2010-02-26 | 2010-03-18 | 59 | 225d | 0d |  |
| 63 | 6.3 | Anàlisi Impacte TIC FEIGAE |  | 15d | 2010-02-26 | 2010-03-18 | 59 | 225d | 0d |  |
| 64 | 6.4 | Anàlisi Impacte NOTA |  | 3d | 2010-02-26 | 2010-03-02 | 59 | 237d | 12d |  |
| 65 | 6.5 | Consolidació Anàlisis d'Impacte |  | 5d | 2010-03-19 | 2010-03-25 | 61, 62, 63, 64 | 225d | 0d |  |
| 66 | 6.6 | Anàlisis d'Impacte Consolidats | milestone | 0d | 2010-03-25 | 2010-03-25 | 65 | 410d |  |  |
| 67 | 7 | **Implantació a Assegurances LSP** |  | 135d | 2010-03-26 | 2010-10-08 |  | 275d |  |  |
| 68 | 7.1 | **Adequacions TIC** |  | 90d | 2010-03-26 | 2010-08-05 |  | 320d |  |  |
| 69 | 7.1.1 | Análisi i Prototip |  | 13d | 2010-03-26 | 2010-04-15 | 65 | 330d | 0d |  |
| 70 | 7.1.2 | Validació Prototip |  | 2d | 2010-04-16 | 2010-04-19 | 69 | 330d | 0d |  |
| 71 | 7.1.3 | Adequació Web |  | 30d | 2010-04-20 | 2010-06-01 | 70 | 330d | 30d |  |
| 72 | 7.1.4 | Adequació Sistema de gestió |  | 35d | 2010-05-27 | 2010-07-16 | 70 | 334d |  | start no earlier than 2010-05-27 |
| 73 | 7.1.5 | Proves funcionals |  | 15d | 2010-07-16 | 2010-08-05 | 71 | 300d | 10d | start no earlier than 2010-07-16 |
| 74 | 7.2 | Proves d'integració |  | 10d | 2010-09-27 | 2010-10-08 | 73, 91SS | 265d | 0d |  |
| 75 | 8 | **Implantació a Banc BCP** |  | 115d | 2010-03-26 | 2010-09-09 |  | 295d |  |  |
| 76 | 8.1 | Parametrització PPE |  | 10d | 2010-03-26 | 2010-04-12 | 65 | 395d | 75d |  |
| 77 | 8.2 | Proves d'Integració |  | 5d | 2010-09-03 | 2010-09-09 | 76, 89SS | 295d |  |  |
| 78 | 9 | **Implantació a FEIGAE** |  | 135d | 2010-03-26 | 2010-10-08 |  | 225d |  |  |
| 79 | 9.1 | **Adequaciosn TIC** |  | 110d | 2010-03-26 | 2010-09-02 |  | 225d |  |  |
| 80 | 9.1.1 | Anàlisi i Prototip |  | 15d | 2010-03-26 | 2010-04-19 | 65 | 225d | 0d |  |
| 81 | 9.1.2 | Validació Prototip |  | 5d | 2010-04-20 | 2010-04-26 | 80 | 225d | 0d |  |
| 82 | 9.1.3 | Desenvolupament Web |  | 60d | 2010-04-27 | 2010-07-22 | 81 | 230d | 0d |  |
| 83 | 9.1.4 | Proves solució Web |  | 10d | 2010-07-23 | 2010-08-05 | 82 | 230d | 5d |  |
| 84 | 9.1.5 | Desenvolupament Aplicació Gestió del Servei |  | 60d | 2010-04-27 | 2010-07-22 | 81 | 225d | 0d |  |
| 85 | 9.1.6 | Proves Aplicació GS |  | 15d | 2010-07-23 | 2010-08-12 | 84 | 225d | 0d |  |
| 86 | 9.1.7 | Integració Interna |  | 15d | 2010-08-13 | 2010-09-02 | 83, 85 | 225d | 0d |  |

| ID | WBS | Task | Type | Duration | Start | Finish | Predecessors | Total slack | Free slack | Constraint |
| --- | --- | --- | --- | --- | --- | --- | --- | --- | --- | --- |
| 87 | 9.2 | **Proves d'Integració** |  | 25d | 2010-09-02 | 2010-10-08 |  | 225d |  |  |
| 88 | 9.2.1 | Inici Proves d'Integració | milestone | 0d | 2010-09-02 | 2010-09-02 | 86 | 225d | 0d |  |
| 89 | 9.2.2 | Integració amb BCP |  | 5d | 2010-09-03 | 2010-09-09 | 88 | 225d | 0d |  |
| 90 | 9.2.3 | Integració amb Proveidor solució Mobilitat |  | 10d | 2010-09-10 | 2010-09-23 | 89 | 225d | 0d |  |
| 91 | 9.2.4 | Integració amb LSP |  | 10d | 2010-09-27 | 2010-10-08 | 90 | 225d | 0d |  |
| 92 | 9.2.5 | Sistemes Disponibles i Integrats | milestone | 0d | 2010-10-08 | 2010-10-08 | 91 | 225d | 0d |  |
| 93 | 10 | **Implantació a NOTA** |  | 125d | 2010-03-26 | 2010-09-23 |  | 285d |  |  |
| 94 | 10.1 | Definició Requeriments dels serveis |  | 10d | 2010-03-26 | 2010-04-12 | 65 | 350d | 0d |  |
| 95 | 10.2 | Configuració del Servei segons requeriments |  | 10d | 2010-04-13 | 2010-04-26 | 94, 104 | 350d | 0d |  |
| 96 | 10.3 | Parametrització dels Serveis |  | 15d | 2010-04-27 | 2010-05-17 | 95 | 350d | 15d |  |
| 97 | 10.4 | Implantanció solució Mobilitat |  | 15d | 2010-06-09 | 2010-07-01 | 96, 107SS | 335d | 25d |  |
| 98 | 10.5 | Participació a la Integració FEIGAE/Moilitat |  | 10d | 2010-09-10 | 2010-09-23 | 97, 89 | 285d |  | start no earlier than 2010-08-02 |
| 99 | 11 | **Proveïment Producte** |  | 183.5d | 2010-01-18 | 2010-10-08 |  | 275d |  |  |
| 100 | 11.1 | Definició requeriments solució mobilitat |  | 10d | 2010-01-18 | 2010-02-01 | 20 | 368.5d | 29.5d |  |
| 101 | 11.2 | Anàlisi Mercat i Avaluació proveïdors |  | 30d | 2010-02-08 | 2010-03-19 | 16, 100FF+5d | 339d | 4d | finish no earlier than 2010-03-19 |
| 102 | 11.3 | Proveïdor Seleccionat | milestone | 0d | 2010-03-26 | 2010-03-26 | 101 | 335d | 0d | start no earlier than 2010-03-26 |
| 103 | 11.4 | Contractació Proveïdor |  | 3d | 2010-03-26 | 2010-03-30 | 102 | 335d | 0d |  |
| 104 | 11.5 | Anàlisi Requeriments demanats |  | 7d | 2010-03-31 | 2010-04-12 | 103 | 335d | 0d |  |
| 105 | 11.6 | Parametrització solució |  | 10d | 2010-04-13 | 2010-04-26 | 104 | 335d | 0d |  |
| 106 | 11.7 | Desenvolupament Adaptacions particulars |  | 30d | 2010-04-27 | 2010-06-08 | 105 | 335d | 0d |  |
| 107 | 11.8 | Implantanció a l'entorn FEIGAE/NOTA |  | 15d | 2010-06-09 | 2010-07-01 | 106 | 335d | 0d |  |
| 108 | 11.9 | Proves Integració amb solució FEIGAE |  | 10d | 2010-09-27 | 2010-10-08 | 107, 90 | 275d |  |  |
| 109 | 12 | **Prova Pilot** |  | 15d | 2010-10-18 | 2010-11-08 |  | 225d |  |  |
| 110 | 12.1 | Inici Prova Pilot | milestone | 0d | 2010-10-18 | 2010-10-18 | 92, 121 | 225d | 0d |  |
| 111 | 12.2 | Proves extrem-extrem |  | 10d | 2010-10-19 | 2010-11-01 | 110 | 225d | 0d |  |
| 112 | 12.3 | Ajustaments Finals |  | 5d | 2010-11-02 | 2010-11-08 | 111 | 225d | 0d |  |
| 113 | 13 | Extracció i transferència de dades |  | 10d | 2010-10-11 | 2010-10-25 | 74, 91 | 265d |  | start no earlier than 2010-08-30 |
| 114 | 14 | Càrrega i depuració de dades |  | 10d | 2010-10-11 | 2010-10-25 | 91, 86 | 265d |  | start no earlier than 2010-08-30 |

| ID | WBS | Task | Type | Duration | Start | Finish | Predecessors | Total slack | Free slack | Constraint |
| --- | --- | --- | --- | --- | --- | --- | --- | --- | --- | --- |
| 115 | 15 | **Adaptacions Administratives** |  | 150d | 2010-02-26 | 2010-10-01 | 59 | 280d |  |  |
| 116 | 15.1 | Adequacions Administratives LSP |  | 30d | 2010-02-26 | 2010-04-12 |  | 400d |  | start no earlier than 2010-02-25 |
| 117 | 15.2 | Definició Processos Administratius FEIGAE |  | 10d | 2010-02-26 | 2010-03-11 |  | 370d | 95d | start no earlier than 2010-02-25 |
| 118 | 15.3 | Implantanció Processos Admin. FEIGAE |  | 20d | 2010-09-03 | 2010-10-01 | 117, 86 | 250d | 25d |  |
| 119 | 16 | **Formació** |  | 375d | 2010-04-27 | 2011-10-10 |  | 10d |  |  |
| 120 | 16.1 | Pla de Formació |  | 10d | 2010-04-27 | 2010-05-10 | 81 | 330d | 80d |  |
| 121 | 16.2 | Formació Gestors del SAU |  | 5d | 2010-10-11 | 2010-10-18 | 120, 92 | 225d | 0d |  |
| 122 | 16.3 | Formació usuaris Mobilitat |  | 15d | 2010-11-02 | 2010-11-22 | 121, 111 | 225d | 0d |  |
| 123 | 16.4 | Formació usuaris Mobilitat Fase2 |  | 15d | 2011-09-20 | 2011-10-10 | 121, 111 | 10d | 0d | start no earlier than 2011-09-20 |
| 124 | 17 | **Acció Comercial** |  | 155d | 2010-04-27 | 2010-12-06 |  | 235d |  |  |
| 125 | 17.1 | Definició Campanyes |  | 15d | 2010-04-27 | 2010-05-17 | 81 | 250d | 0d |  |
| 126 | 17.2 | Preparació i Seguiment Campanyes |  | 125d | 2010-05-18 | 2010-11-15 | 125 | 250d |  |  |
| 127 | 17.3 | Decisió sobre campanyes | milestone | 0d | 2010-08-06 | 2010-08-06 | 128SF-25d | 320d |  |  |
| 128 | 17.4 | Campanya Promocional |  | 20d | 2010-09-10 | 2010-10-11 | 132SF-20d, 125 | 255d | 0d |  |
| 129 | 17.5 | Campanya Consolidació |  | 20d | 2010-11-09 | 2010-12-06 | 128, 132 | 235d |  |  |
| 130 | 18 | **Posada en Operació** |  | 260d | 2010-11-02 | 2011-10-31 |  | 0d |  |  |
| 131 | 18.1 | Distribució PDAs |  | 20d | 2010-11-02 | 2010-11-29 | 122SS | 240d |  |  |
| 132 | 18.2 | Inici Operació | milestone | 0d | 2010-11-08 | 2010-11-08 | 112, 118, 122SS+5d | 225d | 0d |  |
| 133 | 18.3 | Suport a la posada en marxa |  | 10d | 2010-11-09 | 2010-11-22 | 132 | 245d |  |  |
| 134 | 18.4 | Distribució PDAs Fase2 |  | 20d | 2011-09-20 | 2011-10-17 | 123SS | 10d |  | start no earlier than 2011-09-20 |
| 135 | 18.5 | Suport a la posada en marxa Fase2 |  | 15d | 2011-09-20 | 2011-10-10 | 132 | 0d |  | start no earlier than 2011-09-20 |
| 136 | 18.6 | Tancament Projecte Tècnic |  | 10d | 2011-10-11 | 2011-10-24 | 135 | 0d |  |  |
| 137 | 18.7 | Traspàs a Manteniment |  | 5d | 2011-10-25 | 2011-10-31 | 136 | 0d |  |  |
| 138 | 18.8 | Projecte Tancat | milestone | 0d | 2011-10-31 | 2011-10-31 | 137 | 0d |  |  |
